# ProjetCC

How a schedule from GanttProject changed from version to version. A marks actual dates.

## Version 1 (saved 2021-01-13)

Note of the change: Merge branch 'main' of https://github.com/PierreCry/ProjCC into main

| ID | WBS | Task | Duration | Start | Finish | Predecessors |
| --- | --- | --- | --- | --- | --- | --- |
| 1 | 1 | **Projet Bloc n°1** | 22d | 2020-10-15 | 2020-11-05 |  |
| 2 | 1.1 | **Gestion de Projet** | 18d | 2020-10-19 | 2020-11-05 |  |
| 3 |  | Coaching n°1 | 0d | 2020-10-21 | 2020-10-21 |  |
| 4 |  | Coaching n°2 | 0d | 2020-11-06 | 2020-11-06 | 5 |
| 5 | 1.1.3 | **Rédaction PDDQ** | 16d | 2020-10-21 | 2020-11-05 | 3 |
| 6 |  | Introduction et Définition | 4d | 2020-10-21 | 2020-10-24 |  |
| 7 |  | Arbre de Produit | 2d | 2020-10-22 | 2020-10-23 |  |
| 8 |  | Analyse des Risques | 4d | 2020-10-21 | 2020-10-24 |  |
| 9 |  | Relecture | 1d | 2020-10-25 | 2020-10-25 | 6, 7, 8 |
| 10 |  | Backlog de Produit | 15d | 2020-10-21 | 2020-11-04 |  |
| 11 |  | WBS | 6d | 2020-10-21 | 2020-10-26 |  |
| 12 |  | Plan Qualité | 7d | 2020-10-29 | 2020-11-04 |  |
| 13 |  | Relecture | 1d | 2020-11-05 | 2020-11-05 | 9, 10, 11, 12 |
| 14 |  | Gantt | 18d | 2020-10-19 | 2020-11-05 |  |
| 15 |  | Lancement du projet | 0d | 2020-10-15 | 2020-10-15 |  |
| 16 |  | Préparation réunion n°1 | 4d | 2020-10-15 | 2020-10-18 | 15 |
| 17 |  | Réunion Groupe n°1 | 0d | 2020-10-19 | 2020-10-19 | 16 |
| 18 |  | Réunion Client n°1 | 0d | 2020-10-19 | 2020-10-19 | 17 |
| 19 |  | Point Réunion n°1 | 1d | 2020-10-19 | 2020-10-19 | 18 |
| 20 | 1.7 | **Bibliographie** | 13d | 2020-10-20 | 2020-11-01 | 19 |
| 21 |  | Rédaction | 5d | 2020-10-20 | 2020-10-24 |  |
| 22 |  | Relecture | 1d | 2020-10-25 | 2020-10-25 | 21 |
| 23 |  | Rédaction | 5d | 2020-10-27 | 2020-10-31 | 36 |
| 24 |  | Relecture | 1d | 2020-11-01 | 2020-11-01 | 23 |
| 25 | 1.8 | **Préparation Réunion n°2** | 6d | 2020-10-20 | 2020-10-25 | 19 |
| 26 | 1.8.1 | **Prototypage de l'interface** | 3d | 2020-10-20 | 2020-10-22 |  |
| 27 |  | Canvas | 3d | 2020-10-20 | 2020-10-22 |  |
| 28 |  | Brainstorming Page Web | 3d | 2020-10-20 | 2020-10-22 |  |
| 29 |  | Analyse Règles de Correction | 3d | 2020-10-20 | 2020-10-22 |  |
| 30 |  | Réunion Groupe n°2 | 0d | 2020-10-23 | 2020-10-23 | 26, 29 |
| 31 | 1.8.4 | **Développement Interface** | 3d | 2020-10-23 | 2020-10-25 | 30 |
| 32 |  | Canvas | 3d | 2020-10-23 | 2020-10-25 |  |
| 33 |  | CSS/HTML | 3d | 2020-10-23 | 2020-10-25 |  |
| 34 |  | Prototypage Algorithme | 3d | 2020-10-23 | 2020-10-25 | 30 |
| 35 |  | Réunion Client n°2 | 0d | 2020-10-26 | 2020-10-26 | 22, 25 |
| 36 |  | Point Réunion n°2 | 1d | 2020-10-26 | 2020-10-26 | 35 |
| 37 | 1.11 | **Préparation Réunion n°3** | 6d | 2020-10-27 | 2020-11-01 | 36 |
| 38 | 1.11.1 | **Développement Interface** | 1d | 2020-10-27 | 2020-10-27 |  |
| 39 |  | Canvas | 1d | 2020-10-27 | 2020-10-27 |  |
| 40 |  | HTML/CSS | 1d | 2020-10-27 | 2020-10-27 |  |
| 41 | 1.11.2 | **Développement Algorithme** | 1d | 2020-10-27 | 2020-10-27 |  |
| 42 |  | Création Diagramme de Classes | 1d | 2020-10-27 | 2020-10-27 |  |
| 43 |  | Réunion Groupe n°3 | 0d | 2020-10-28 | 2020-10-28 | 38, 41 |
| 44 | 1.11.4 | **Développement Interface** | 5d | 2020-10-28 | 2020-11-01 | 43 |
| 45 |  | Canvas | 5d | 2020-10-28 | 2020-11-01 |  |
| 46 |  | HTML/CSS | 5d | 2020-10-28 | 2020-11-01 |  |
| 47 | 1.11.5 | **Développement Algorithme** | 5d | 2020-10-28 | 2020-11-01 | 43 |
| 48 |  | Création Diagramme de Classes | 1d | 2020-10-28 | 2020-10-28 |  |
| 49 |  | Rédaction Algorithme | 4d | 2020-10-29 | 2020-11-01 | 48 |
| 50 |  | Réunion Client n°3 | 0d | 2020-11-02 | 2020-11-02 | 24, 37 |
| 51 |  | Point Réunion n°3 | 1d | 2020-11-02 | 2020-11-02 | 50 |
| 52 | 1.14 | **Préparation Réunion n°3** | 3d | 2020-11-03 | 2020-11-05 | 51 |
| 53 | 1.14.1 | **Développement Interface** | 1d | 2020-11-03 | 2020-11-03 |  |
| 54 |  | HTML/CSS | 1d | 2020-11-03 | 2020-11-03 |  |
| 55 | 1.14.2 | **Développement Algorithme** | 1d | 2020-11-03 | 2020-11-03 |  |
| 56 |  | Mise à Jour Algorithme | 1d | 2020-11-03 | 2020-11-03 |  |
| 57 |  | Réunion Groupe n°4 | 0d | 2020-11-04 | 2020-11-04 | 53, 55 |
| 58 | 1.14.4 | **Développement Interface** | 2d | 2020-11-04 | 2020-11-05 | 57 |
| 59 |  | HTML/CSS | 2d | 2020-11-04 | 2020-11-05 |  |
| 60 | 1.14.5 | **Développement Algorithme** | 2d | 2020-11-04 | 2020-11-05 | 57 |
| 61 |  | Mise à Jour Algorithme | 2d | 2020-11-04 | 2020-11-05 |  |
| 62 |  | Réunion client n°4 | 0d | 2020-11-06 | 2020-11-06 | 52 |

## Version 2 (saved 2021-01-15)

Note of the change: gantt

Last finish 2020-11-06 → 2021-01-07 (+62d).

Added:

| ID | Task | Duration | Start | Finish | Predecessors | Resources |
| --- | --- | --- | --- | --- | --- | --- |
| 63 | **Projet Bloc n°2** | 31d | 2020-12-07 | 2021-01-06 |  |  |
| 64 | **Copie_Gestion de Projet** | 31d | 2020-12-07 | 2021-01-06 |  | Benoît Pannetier |
| 65 | Coaching n°3 | 0d | 2020-12-15 | 2020-12-15 |  |  |
| 66 | Coaching n°4 | 0d | 2021-01-07 | 2021-01-07 | 67 |  |
| 67 | **Rédaction PDDQ** | 31d | 2020-12-07 | 2021-01-06 | 76 |  |
| 68 | MAJ Analyse des Risques | 1d | 2020-12-07 | 2020-12-07 |  |  |
| 69 | Copie_MAJ Analyse des Risques | 1d | 2021-01-06 | 2021-01-06 |  |  |
| 70 | Relecture | 1d | 2020-12-08 | 2020-12-08 | 68 |  |
| 71 | MAJ Backlog de Produit | 10d | 2020-12-07 | 2020-12-16 |  |  |
| 72 | MAJ WBS | 4d | 2020-12-14 | 2020-12-17 |  |  |
| 73 | MAJ Plan Qualité | 2d | 2020-12-14 | 2020-12-15 |  |  |
| 74 | Relecture | 1d | 2020-12-18 | 2020-12-18 | 71, 72, 73 |  |
| 75 | Copie_Gantt | 18d | 2020-12-14 | 2020-12-31 |  |  |
| 76 | Réunion client n°5 | 0d | 2020-12-07 | 2020-12-07 |  |  |
| 77 | Réunion client n°6 | 0d | 2020-12-07 | 2020-12-07 |  |  |

## Version 3 (saved 2021-01-15)

Note of the change: maj gantt

Last finish 2021-01-07 → 2021-01-15 (+8d).

Added:

| ID | Task | Duration | Start | Finish | Predecessors |
| --- | --- | --- | --- | --- | --- |
| 74 | Gantt | 5d | 2020-12-14 | 2020-12-18 |  |
| 75 | **Rédaction PDDQ** | 10d | 2021-01-05 | 2021-01-14 |  |
| 76 | MAJ Analyse des Risques | 1d | 2021-01-05 | 2021-01-05 | 81, 83 |
| 77 | MAJ PDDQ | 5d | 2021-01-06 | 2021-01-10 | 76 |
| 78 | MAJ Analyse des Risques | 1d | 2021-01-11 | 2021-01-11 | 77, 84 |
| 79 | Gantt | 5d | 2021-01-06 | 2021-01-10 | 76 |
| 80 | Préparation Présentation | 3d | 2021-01-12 | 2021-01-14 | 78, 79 |
| 81 | Révisions | 17d | 2020-12-19 | 2021-01-04 | 67, 74, 87 |
| 84 | Réunion client n°7 | 0d | 2021-01-11 | 2021-01-11 | 93 |
| 85 | Réunion client n°8 | 0d | 2021-01-15 | 2021-01-15 |  |
| 86 | Point réunion n°5 | 1d | 2020-12-07 | 2020-12-07 | 82 |
| 87 | **Préparation Réunion n°6** | 11d | 2020-12-08 | 2020-12-18 | 86 |
| 88 | Recherche Base de Données | 11d | 2020-12-08 | 2020-12-18 |  |
| 89 | Développement Interface | 11d | 2020-12-08 | 2020-12-18 |  |
| 90 | Développement Outil | 11d | 2020-12-08 | 2020-12-18 |  |
| 91 | Développement Algorithme | 11d | 2020-12-08 | 2020-12-18 |  |
| 92 | Point Réunion n°6 | 1d | 2021-01-05 | 2021-01-05 | 83 |
| 93 | **Préparation Réunion n°7** | 5d | 2021-01-06 | 2021-01-10 | 92 |
| 94 | Recherche Base de Données | 5d | 2021-01-06 | 2021-01-10 |  |
| 95 | Développement Interface | 5d | 2021-01-06 | 2021-01-10 |  |
| 96 | Développement Outil | 5d | 2021-01-06 | 2021-01-10 |  |
| 97 | Développement Algorithme | 5d | 2021-01-06 | 2021-01-10 |  |

Removed: 69 Copie_MAJ Analyse des Risques; 75 Copie_Gantt

Changed:

| ID | Task | Start | Finish | Duration | Predecessors | Other |
| --- | --- | --- | --- | --- | --- | --- |
| 63 | **Projet Bloc n°2** |  | 2021-01-06 → 2021-01-14 (+8d) | 31d → 39d |  |  |
| 64 | **Gestion de Projet** |  | 2021-01-06 → 2021-01-14 (+8d) | 31d → 39d |  | was named Copie_Gestion de Projet |
| 66 | Coaching n°4 | 2021-01-07 → 2021-01-15 (+8d) | 2021-01-07 → 2021-01-15 (+8d) |  | 67 → 80 |  |
| 67 | **Rédaction PDDQ** |  | 2021-01-06 → 2020-12-18 (-19d) | 31d → 12d |  |  |
| 71 | MAJ WBS | 2020-12-14 → 2020-12-07 (-7d) | 2020-12-17 → 2020-12-10 (-7d) |  |  |  |
| 72 | MAJ Plan Qualité | 2020-12-14 → 2020-12-07 (-7d) | 2020-12-15 → 2020-12-08 (-7d) |  |  |  |
| 73 | Relecture | 2020-12-18 → 2020-12-17 (-1d) | 2020-12-18 → 2020-12-17 (-1d) |  |  |  |
| 83 | Réunion client n°6 | 2020-12-07 → 2021-01-05 (+29d) | 2020-12-07 → 2021-01-05 (+29d) |  |  |  |

## Version 4 (saved 2021-01-15)

Note of the change: maj gantt

Last finish stays 2021-01-15.

Added:

| ID | Task | Duration | Start | Finish | Predecessors |
| --- | --- | --- | --- | --- | --- |
| 90 | Canvas | 11d | 2020-12-08 | 2020-12-18 |  |
| 91 | Page Web | 11d | 2020-12-08 | 2020-12-18 |  |
| 97 | Canvas | 5d | 2021-01-06 | 2021-01-10 |  |
| 98 | Page Web | 5d | 2021-01-06 | 2021-01-10 |  |
| 100 | Rédaction Algorithme | 5d | 2021-01-06 | 2021-01-10 |  |
| 101 | Traduction en JS | 5d | 2021-01-06 | 2021-01-10 |  |
| 102 | Point Réunion n°7 | 1d | 2021-01-11 | 2021-01-11 | 84 |
| 103 | **Préparation Réunion n°8** | 1d | 2021-01-12 | 2021-01-12 | 102 |
| 104 | Développement Base de Données | 1d | 2021-01-12 | 2021-01-12 |  |
| 105 | **Développement Interface** | 1d | 2021-01-12 | 2021-01-12 |  |
| 106 | Canvas | 1d | 2021-01-12 | 2021-01-12 |  |
| 107 | Page Web | 1d | 2021-01-12 | 2021-01-12 |  |
| 108 | Développement Correcteur Automatique | 1d | 2021-01-12 | 2021-01-12 |  |
| 109 | Réunion Groupe n°5 | 0d | 2021-01-13 | 2021-01-13 | 103 |
| 110 | **Préparation Réunion n°7** | 1d | 2021-01-13 | 2021-01-13 | 109 |
| 111 | Développement Base de Données | 1d | 2021-01-13 | 2021-01-13 |  |
| 112 | **Développement Interface** | 1d | 2021-01-13 | 2021-01-13 |  |
| 113 | Canvas | 1d | 2021-01-13 | 2021-01-13 |  |
| 114 | Page Web | 1d | 2021-01-13 | 2021-01-13 |  |
| 115 | Développement Correcteur Automatique | 1d | 2021-01-13 | 2021-01-13 |  |

Removed: 90 Développement Outil; 96 Développement Outil

Changed:

| ID | Task | Predecessors | Other |
| --- | --- | --- | --- |
| 85 | Réunion client n°8 | none → 80, 110 |  |
| 92 | Développement Correcteur Automatique |  | was named Développement Algorithme |
| 99 | **Développement Correcteur Automatique** |  | was named Développement Algorithme |

## Version 5 (saved 2021-01-15)

Note of the change: maj gantt

Last finish stays 2021-01-15.

Changed:

| ID | Task | Other |
| --- | --- | --- |
| 68 | MAJ Analyse des Risques | resources none → Pierre Cry |
| 69 | Relecture | resources none → Pierre Cry; Nur Kinali; Benoît Pannetier; Jérémy Pascal; Guillaume Vivies; Burak Yalcin |
| 70 | MAJ Backlog de Produit | resources none → Benoît Pannetier |
| 71 | MAJ WBS | resources none → Nur Kinali |
| 72 | MAJ Plan Qualité | resources none → Pierre Cry |
| 73 | Relecture | resources none → Pierre Cry; Nur Kinali; Benoît Pannetier; Jérémy Pascal; Guillaume Vivies; Burak Yalcin |
| 74 | Gantt | resources none → Burak Yalcin |
| 75 | **Rédaction PDDQ** | resources none → Benoît Pannetier |
| 76 | MAJ Analyse des Risques | resources none → Pierre Cry |
| 77 | MAJ PDDQ | resources none → Benoît Pannetier |
| 78 | MAJ Analyse des Risques | resources none → Pierre Cry |
| 79 | Gantt | resources none → Burak Yalcin |
| 80 | Préparation Présentation | resources none → Pierre Cry; Nur Kinali; Benoît Pannetier; Jérémy Pascal; Guillaume Vivies; Burak Yalcin |
| 86 | Point réunion n°5 | resources none → Pierre Cry; Nur Kinali; Benoît Pannetier; Jérémy Pascal; Guillaume Vivies; Burak Yalcin |
| 87 | **Préparation Réunion n°6** | resources none → Pierre Cry; Nur Kinali; Benoît Pannetier; Jérémy Pascal; Guillaume Vivies; Burak Yalcin |
| 88 | Recherche Base de Données | resources none → Nur Kinali |
| 89 | **Développement Interface** | resources none → Pierre Cry; Jérémy Pascal; Guillaume Vivies |
| 90 | Canvas | resources none → Guillaume Vivies |
| 91 | Page Web | resources none → Pierre Cry; Jérémy Pascal |
| 92 | Développement Correcteur Automatique | resources none → Pierre Cry; Burak Yalcin |
| 93 | Point Réunion n°6 | resources none → Pierre Cry; Nur Kinali; Benoît Pannetier; Jérémy Pascal; Guillaume Vivies; Burak Yalcin |
| 94 | **Préparation Réunion n°7** | resources none → Pierre Cry; Nur Kinali; Benoît Pannetier; Jérémy Pascal; Burak Yalcin |
| 95 | Recherche Base de Données | resources none → Nur Kinali |
| 96 | **Développement Interface** | resources none → Pierre Cry; Jérémy Pascal; Guillaume Vivies |
| 97 | Canvas | resources none → Guillaume Vivies |
| 98 | Page Web | resources none → Pierre Cry; Jérémy Pascal |
| 99 | **Développement Correcteur Automatique** | resources none → Pierre Cry; Burak Yalcin |
| 100 | Rédaction Algorithme | resources none → Burak Yalcin |
| 101 | Traduction en JS | resources none → Pierre Cry |
| 102 | Point Réunion n°7 | resources none → Pierre Cry; Nur Kinali; Benoît Pannetier; Jérémy Pascal; Guillaume Vivies; Burak Yalcin |
| 103 | **Préparation Réunion n°8** | resources none → Pierre Cry; Nur Kinali; Jérémy Pascal; Guillaume Vivies; Burak Yalcin |
| 104 | Développement Base de Données | resources none → Nur Kinali |
| 105 | **Développement Interface** | resources none → Pierre Cry; Jérémy Pascal; Guillaume Vivies |
| 106 | Canvas | resources none → Guillaume Vivies |
| 107 | Page Web | resources none → Jérémy Pascal |
| 108 | Développement Correcteur Automatique | resources none → Burak Yalcin |
| 110 | **Préparation Réunion n°7** | resources none → Pierre Cry; Nur Kinali; Benoît Pannetier; Jérémy Pascal; Guillaume Vivies; Burak Yalcin |
| 111 | Développement Base de Données | resources none → Nur Kinali |
| 112 | **Développement Interface** | resources none → Pierre Cry; Jérémy Pascal; Guillaume Vivies |
| 113 | Canvas | resources none → Guillaume Vivies |
| 114 | Page Web | resources none → Jérémy Pascal |
| 115 | Développement Correcteur Automatique | resources none → Pierre Cry; Burak Yalcin |
